# SMO_ADPI_ADPI Date_Schedule

Schedule from MS Project, 2021-01-27 to 2021-11-08.
NIC

## Calendars

- Standard: Mon-Fri 08:00-12:00, 13:00-17:00; Sat-Sun off.

## Resources

| Resource |
| --- |
| khalid Algifari |
| Adeeb S. Aljurish |
| yahya o. al-assaf |
| Shahbaz Khan |
| SQ Manager |
| Configuration Controller |
| Process Engineer |
| Tool Specialist |
| PMO |

## Schedule

| ID | WBS | Task | Duration | Start | Finish | Predecessors | Total slack | Resources | Work |
| --- | --- | --- | --- | --- | --- | --- | --- | --- | --- |
| 1 | 1 | **PMM_YEAR** | 204d | 2021-01-27 | 2021-11-08 |  |  |  | 3368h |
| 2 | 1.1 | **PMM _ Lifecycle** | 204d | 2021-01-27 | 2021-11-08 |  | 0d |  | 3368h |
| 3 | 1.1.1 | **Initiating and Diagnosing Phase** | 27d | 2021-01-27 | 2021-03-04 |  | 0d |  | 216h |
| 4 | 1.1.1.1 | Initiate Process Improvement Project | 2d | 2021-01-27 | 2021-01-28 |  | 0d | PMO | 16h |
| 5 | 1.1.1.2 | Establish Project’s Environment and CM Plan | 3d | 2021-01-29 | 2021-02-02 | 4 | 0d | Configuration Controller | 24h |
| 6 | 1.1.1.3 | Schedule and Assign Tasks | 3d | 2021-02-03 | 2021-02-05 | 5 | 0d | Process Engineer | 24h |
| 7 | 1.1.1.4 | Describe Current Business | 5d | 2021-02-08 | 2021-02-12 | 6 | 0d | Process Engineer | 40h |
| 8 | 1.1.1.5 | Assess and Analyze Process Improvement Opportunities | 9d | 2021-02-15 | 2021-02-25 | 7 | 0d | Process Engineer | 72h |
| 9 | 1.1.1.6 | Establish Process Improvement Action Plan | 5d | 2021-02-26 | 2021-03-04 | 8 | 0d | Process Engineer | 40h |
| 10 | 1.1.2 | **Establishing and Acting Phase** | 172d | 2021-03-05 | 2021-11-01 |  | 0d | Process Engineer | 3112h |
| 11 | 1.1.2.1 | **Quarter 1** | 45d | 2021-03-05 | 2021-05-06 |  | 0d | Process Engineer | 720h |
| 12 | 1.1.2.1.1 | Update Measurement Repository | 1d | 2021-03-05 | 2021-03-05 | 9 | 0d | Process Engineer | 8h |
| 13 | 1.1.2.1.2 | Asssess and Analyze Process Improvement Opportunities | 20d | 2021-03-08 | 2021-04-02 | 12 | 0d | Process Engineer | 160h |
| 14 | 1.1.2.1.3 | Collect approved Process Improvement Proposals (PIPs) | 5d | 2021-04-05 | 2021-04-09 | 13 | 0d | Process Engineer | 40h |
| 15 | 1.1.2.1.4 | Update Process Improvement Action Plan | 3d | 2021-04-12 | 2021-04-14 | 14 | 0d | Process Engineer | 24h |
| 16 | 1.1.2.1.5 | Update Process Asset Library | 5d | 2021-04-15 | 2021-04-21 | 15 | 0d | Process Engineer | 40h |
| 17 | 1.1.2.1.6 | Build Process Template | 3d | 2021-04-22 | 2021-04-26 | 16 | 0d | Tool Specialist | 24h |
| 18 | 1.1.2.1.7 | Obtain Commitment on Process Definition | 2d | 2021-04-27 | 2021-04-28 | 17 | 0d | Process Engineer | 16h |
| 19 | 1.1.2.1.8 | Perform QA Audit | 2d | 2021-04-29 | 2021-04-30 | 18 | 0d | PMO | 16h |
| 20 | 1.1.2.1.9 | Perform Configuration Audit | 2d | 2021-05-03 | 2021-05-04 | 19 | 0d | Configuration Controller | 16h |
| 21 | 1.1.2.1.10 | Baseline Configuration Items | 2d | 2021-05-05 | 2021-05-06 | 20 | 0d | Configuration Controller | 16h |
| 22 | 1.1.2.2 | **Quarter 2** | 45d | 2021-05-07 | 2021-07-08 |  | 0d |  | 360h |
| 23 | 1.1.2.2.1 | Update Measurement Repository | 1d | 2021-05-07 | 2021-05-07 | 21 | 0d | Process Engineer | 8h |
| 24 | 1.1.2.2.2 | Asssess and Analyze Process Improvement Opportunities | 20d | 2021-05-10 | 2021-06-04 | 23 | 0d | Process Engineer | 160h |
| 25 | 1.1.2.2.3 | Collect approved Process Improvement Proposals (PIPs) | 5d | 2021-06-07 | 2021-06-11 | 24 | 0d | Process Engineer | 40h |
| 26 | 1.1.2.2.4 | Update Process Improvement Action Plan | 3d | 2021-06-14 | 2021-06-16 | 25 | 0d | Process Engineer | 24h |
| 27 | 1.1.2.2.5 | Update Process Asset Library | 5d | 2021-06-17 | 2021-06-23 | 26 | 0d | Process Engineer | 40h |
| 28 | 1.1.2.2.6 | Build Process Template | 3d | 2021-06-24 | 2021-06-28 | 27 | 0d | Tool Specialist | 24h |
| 29 | 1.1.2.2.7 | Obtain Commitment on Process Definition | 2d | 2021-06-29 | 2021-06-30 | 28 | 0d | Process Engineer | 16h |
| 30 | 1.1.2.2.8 | Perform QA Audit | 2d | 2021-07-01 | 2021-07-02 | 29 | 0d | PMO | 16h |
| 31 | 1.1.2.2.9 | Perform Configuration Audit | 2d | 2021-07-05 | 2021-07-06 | 30 | 0d | Configuration Controller | 16h |
| 32 | 1.1.2.2.10 | Baseline Configuration Items | 2d | 2021-07-07 | 2021-07-08 | 31 | 0d | Configuration Controller | 16h |

| ID | WBS | Task | Duration | Start | Finish | Predecessors | Total slack | Resources | Work |
| --- | --- | --- | --- | --- | --- | --- | --- | --- | --- |
| 33 | 1.1.2.3 | **Quarter 3** | 45d | 2021-07-09 | 2021-09-09 |  | 0d |  | 360h |
| 34 | 1.1.2.3.1 | Update Measurement Repository | 1d | 2021-07-09 | 2021-07-09 | 32 | 0d | Process Engineer | 8h |
| 35 | 1.1.2.3.2 | Asssess and Analyze Process Improvement Opportunities | 20d | 2021-07-12 | 2021-08-06 | 34 | 0d | Process Engineer | 160h |
| 36 | 1.1.2.3.3 | Collect approved Process Improvement Proposals (PIPs) | 5d | 2021-08-09 | 2021-08-13 | 35 | 0d | Process Engineer | 40h |
| 37 | 1.1.2.3.4 | Update Process Improvement Action Plan | 3d | 2021-08-16 | 2021-08-18 | 36 | 0d | Process Engineer | 24h |
| 38 | 1.1.2.3.5 | Update Process Asset Library | 5d | 2021-08-19 | 2021-08-25 | 37 | 0d | Process Engineer | 40h |
| 39 | 1.1.2.3.6 | Build Process Template | 3d | 2021-08-26 | 2021-08-30 | 38 | 0d | Tool Specialist | 24h |
| 40 | 1.1.2.3.7 | Obtain Commitment on Process Definition | 2d | 2021-08-31 | 2021-09-01 | 39 | 0d | Process Engineer | 16h |
| 41 | 1.1.2.3.8 | Perform QA Audit | 2d | 2021-09-02 | 2021-09-03 | 40 | 0d | PMO | 16h |
| 42 | 1.1.2.3.9 | Perform Configuration Audit | 2d | 2021-09-06 | 2021-09-07 | 41 | 0d | Configuration Controller | 16h |
| 43 | 1.1.2.3.10 | Baseline Configuration Items | 2d | 2021-09-08 | 2021-09-09 | 42 | 0d | Configuration Controller | 16h |
| 44 | 1.1.2.4 | **Quarter 4** | 37d | 2021-09-10 | 2021-11-01 |  | 0d |  | 296h |
| 45 | 1.1.2.4.1 | Update Measurement Repository | 1d | 2021-09-10 | 2021-09-10 | 43 | 0d | Process Engineer | 8h |
| 46 | 1.1.2.4.2 | Asssess and Analyze Process Improvement Opportunities | 16d | 2021-09-13 | 2021-10-04 | 45 | 0d | Process Engineer | 128h |
| 47 | 1.1.2.4.3 | Collect approved Process Improvement Proposals (PIPs) | 3d | 2021-10-05 | 2021-10-07 | 46 | 0d | Process Engineer | 24h |
| 48 | 1.1.2.4.4 | Update Process Improvement Action Plan | 3d | 2021-10-08 | 2021-10-12 | 47 | 0d | Process Engineer | 24h |
| 49 | 1.1.2.4.5 | Update Process Asset Library | 3d | 2021-10-13 | 2021-10-15 | 48 | 0d | Process Engineer | 24h |
| 50 | 1.1.2.4.6 | Build Process Template | 3d | 2021-10-18 | 2021-10-20 | 49 | 0d | Tool Specialist | 24h |
| 51 | 1.1.2.4.7 | Obtain Commitment on Process Definition | 2d | 2021-10-21 | 2021-10-22 | 50 | 0d | Process Engineer | 16h |
| 52 | 1.1.2.4.8 | Perform QA Audit | 2d | 2021-10-25 | 2021-10-26 | 51 | 0d | PMO | 16h |
| 53 | 1.1.2.4.9 | Perform Configuration Audit | 2d | 2021-10-27 | 2021-10-28 | 52 | 0d | Configuration Controller | 16h |
| 54 | 1.1.2.4.10 | Baseline Configuration Items | 2d | 2021-10-29 | 2021-11-01 | 53 | 0d | Configuration Controller | 16h |
| 55 | 1.1.3 | Close-Out Process improvement | 5d | 2021-11-02 | 2021-11-08 | 54 | 0d | PMO | 40h |
